# Mobilink Change Controls V4

Schedule from MS Project, 2011-10-17 to 2012-01-31, A marks actual dates.
Mobilink Change Controls Project
Innovise ESM
Expansion/Enhancement of features and functionaility post delivery of OSS Phases 1 & 2

## Calendars

- Standard: Mon-Fri 08:00-12:00, 13:00-17:00; Sat-Sun off.

## Resources

| Resource |
| --- |
| Alex Silva |
| Sagar |
| Chris Janes |
| Julian Luxton |
| Ken Edmunds |
| Badar Khan |
| Andrew Blakey |
| Kris Newport |
| Ed Francis |
| David Cunningham |
| Graham Browne |
| Paul Miller |
| Rishikesh Bhide |
| Nick Fenables |
| Dinesh Chandran |
| ANO |

## Schedule

| ID | WBS | Task | Type | Duration | Start | Finish | Predecessors | Complete | Remaining | Baseline start | Baseline finish | Baseline duration | Total slack | Free slack | Constraint | Resources | Work | Actual work |
| --- | --- | --- | --- | --- | --- | --- | --- | --- | --- | --- | --- | --- | --- | --- | --- | --- | --- | --- |
| 1 | 1 | **Mobilink Change Controls** |  | 77d? | 2011-10-17 A | 2012-01-31 |  | 4% | 74.18d? | 2011-10-17 | 2012-01-31 | 77d? | 0d |  |  |  | 1840h | 81.6h |
| 2 | 1.1 | **WP0 - Project Management** |  | 77d | 2011-10-17 | 2012-01-31 |  |  |  | 2011-10-17 | 2012-01-31 | 77d | 0d |  |  |  | 224h |  |
| 3 | 1.1.1 | Management & Control | manual | 77d | 2011-10-17 | 2012-01-31 |  |  |  | 2011-10-17 | 2012-01-31 | 77d |  |  |  | Badar Khan [50%] | 224h |  |
| 4 | 1.2 | **WP1 – New Ericsson probe into IN network environment** |  | 77d | 2011-10-17 A | 2012-01-31 |  | 3% | 74.59d | 2011-10-17 | 2012-01-31 | 77d | 0d |  |  |  | 264h | 16h |
| 5 | 1.2.1 | Design |  | 1d | 2011-10-17 A | 2011-10-17 A |  | 100% |  | 2011-10-17 | 2011-10-17 | 1d |  |  | start no earlier than 2011-10-17 | Alex Silva | 8h | 8h |
| 6 | 1.2.2 | Install new Ericsson probe into environment |  | 1d | 2011-10-18 A | 2011-10-18 A | 5 | 100% |  | 2011-10-18 | 2011-10-18 | 1d |  |  |  | Alex Silva | 8h | 8h |
| 7 | 1.2.3 | Create probe rules |  | 4d | 2011-11-07 | 2011-11-10 | 6 |  |  | 2011-11-07 | 2011-11-10 | 4d | 0d |  | start no earlier than 2011-11-07 | Chris Janes [50%] | 16h |  |
| 8 | 1.2.4 | Run probe to receive/collect events |  | 4d | 2011-11-11 | 2011-11-16 | 7 |  |  | 2011-11-11 | 2011-11-16 | 4d | 0d |  |  | Chris Janes [50%] | 16h |  |
| 9 | 1.2.5 | Create/modify policies |  | 40d | 2011-11-17 | 2012-01-11 | 8 |  |  | 2011-11-17 | 2012-01-11 | 40d | 0d |  | start no earlier than 2011-10-25 | Chris Janes [50%] | 160h |  |
| 10 | 1.2.6 | Test that events and policies produce same results as in previous system. |  | 10d | 2012-01-12 | 2012-01-25 | 9 |  |  | 2012-01-12 | 2012-01-25 | 10d | 0d |  | start no earlier than 2011-12-13 | Chris Janes [50%] | 40h |  |
| 11 | 1.2.7 | Document and handover to support |  | 2d | 2012-01-26 | 2012-01-27 | 10 |  |  | 2012-01-26 | 2012-01-27 | 2d | 0d |  | start no earlier than 2011-12-20 | Chris Janes [50%] | 8h |  |
| 12 | 1.2.8 | Deploy |  | 2d | 2012-01-30 | 2012-01-31 | 11 |  |  | 2012-01-30 | 2012-01-31 | 2d | 0d |  |  | Chris Janes [50%] | 8h |  |
| 13 | 1.3 | **WP4 – Motorola GSR10 Upgrade** |  | 9d | 2011-11-28 | 2011-12-08 |  |  |  | 2011-11-28 | 2011-12-08 | 9d | 37d |  |  |  | 72h |  |
| 14 | 1.3.1 | Design |  | 1d | 2011-11-28 | 2011-11-28 |  |  |  | 2011-11-28 | 2011-11-28 | 1d | 37d | 0d | start no earlier than 2011-11-28 | Kris Newport | 8h |  |
| 15 | 1.3.2 | Apply IBM upgrade/patch on incumbent probe |  | 2d | 2011-11-29 | 2011-11-30 | 14 |  |  | 2011-11-29 | 2011-11-30 | 2d | 37d | 0d |  | Kris Newport | 16h |  |
| 16 | 1.3.3 | Check that events are still being processed as per pre-upgrade |  | 2d | 2011-12-01 | 2011-12-02 | 15 |  |  | 2011-12-01 | 2011-12-02 | 2d | 37d | 0d |  | Kris Newport | 16h |  |
| 17 | 1.3.4 | Investigate any policies which appear to fail |  | 2d | 2011-12-05 | 2011-12-06 | 16 |  |  | 2011-12-05 | 2011-12-06 | 2d | 37d | 0d |  | Kris Newport | 16h |  |
| 18 | 1.3.5 | Handover to support |  | 1d | 2011-12-07 | 2011-12-07 | 17 |  |  | 2011-12-07 | 2011-12-07 | 1d | 37d | 0d |  | Kris Newport | 8h |  |
| 19 | 1.3.6 | Deploy |  | 1d | 2011-12-08 | 2011-12-08 | 18 |  |  | 2011-12-08 | 2011-12-08 | 1d | 37d | 0d |  | Kris Newport | 8h |  |
| 20 | 1.4 | Payment Milestone 3 - WP1 Ericsson & WP4 Motorola | milestone | 0d | 2011-12-08 | 2011-12-08 | 19 |  |  | 2011-12-08 | 2011-12-08 | 0d | 37d | 21d |  |  |  |  |
| 21 | 1.5 | **WP2 – Additional IP devices** |  | 8d | 2011-10-24 | 2011-11-02 |  |  |  | 2011-10-24 | 2011-11-02 | 8d | 64d |  |  |  | 64h |  |
| 22 | 1.5.1 | Receive (from Mobilink) spreadsheet detailing full list of IP addresses and associated SNMP Community Strings for all in-scope devices. |  | 1d | 2011-10-24 | 2011-10-24 |  |  |  | 2011-10-24 | 2011-10-24 | 1d | 64d | 0d | start no earlier than 2011-10-24 | Ken Edmunds | 8h |  |
| 23 | 1.5.2 | Load into ITNM/IP system. |  | 1d | 2011-10-25 | 2011-10-25 | 22 |  |  | 2011-10-25 | 2011-10-25 | 1d | 64d | 0d |  | Ken Edmunds | 8h |  |
| 24 | 1.5.3 | Run discovery for up to 2 days |  | 1d | 2011-10-26 | 2011-10-26 | 23 |  |  | 2011-10-26 | 2011-10-26 | 1d | 64d | 0d |  | Ken Edmunds | 8h |  |
| 25 | 1.5.4 | Check for failures and fix or escalate to Mobilink for resolution as appropriate. |  | 3d | 2011-10-27 | 2011-10-31 | 24 |  |  | 2011-10-27 | 2011-10-31 | 3d | 64d | 0d |  | Ken Edmunds | 24h |  |
| 26 | 1.5.5 | Document and pass over to support. |  | 1d | 2011-11-01 | 2011-11-01 | 25 |  |  | 2011-11-01 | 2011-11-01 | 1d | 64d | 0d |  | Ken Edmunds | 8h |  |
| 27 | 1.5.6 | Deploy |  | 1d | 2011-11-02 | 2011-11-02 | 26 |  |  | 2011-11-02 | 2011-11-02 | 1d | 64d |  |  | Ken Edmunds | 8h |  |

| ID | WBS | Task | Type | Duration | Start | Finish | Predecessors | Complete | Baseline start | Baseline finish | Baseline duration | Total slack | Free slack | Constraint | Resources | Work | Actual work |
| --- | --- | --- | --- | --- | --- | --- | --- | --- | --- | --- | --- | --- | --- | --- | --- | --- | --- |
| 28 | 1.6 | **WP7 – Core MIBs {NSN - HiT SDH equipment (Core Domain) and Define – BGM (VAS Domain)}** |  | 18.5d | 2011-11-14 | 2011-12-08 |  |  | 2011-11-14 | 2011-12-08 | 18.5d | 37.5d |  |  |  | 144h |  |
| 29 | 1.6.1 | Design |  | 1.5d | 2011-11-14 | 2011-11-15 |  |  | 2011-11-14 | 2011-11-15 | 1.5d | 37.5d | 0d | start no earlier than 2011-11-14 | Ken Edmunds | 8h |  |
| 30 | 1.6.2 | Obtain two Vendor written MIBs |  | 4d | 2011-11-15 | 2011-11-21 | 29 |  | 2011-11-15 | 2011-11-21 | 4d | 37.5d | 0d |  | Ken Edmunds | 32h |  |
| 31 | 1.6.3 | Create rules files from MIBs |  | 2d | 2011-11-21 | 2011-11-23 | 30 |  | 2011-11-21 | 2011-11-23 | 2d | 37.5d | 0d |  | Ken Edmunds | 16h |  |
| 32 | 1.6.4 | Modify rules |  | 8d | 2011-11-23 | 2011-12-05 | 31 |  | 2011-11-23 | 2011-12-05 | 8d | 37.5d | 0d |  | Ken Edmunds | 64h |  |
| 33 | 1.6.5 | Test that events are being processed as per existing rules file. |  | 2d | 2011-12-05 | 2011-12-07 | 32 |  | 2011-12-05 | 2011-12-07 | 2d | 37.5d | 0d |  | Ken Edmunds | 16h |  |
| 34 | 1.6.6 | Deploy |  | 1d | 2011-12-07 | 2011-12-08 | 33 |  | 2011-12-07 | 2011-12-08 | 1d | 37.5d | 0d |  | Ken Edmunds | 8h |  |
| 35 | 1.6.7 | Payment Milestone 2- WP2 Additional IP Devices & WP7 MIBS | milestone | 0d | 2011-12-08 | 2011-12-08 | 34 |  | 2011-12-08 | 2011-12-08 | 0d | 37.5d | 21.5d |  |  |  |  |
| 36 | 1.7 | **WP3 – Alcatel B11 Upgrade (completed)** |  | 2.8d | 2011-10-17 A | 2011-10-19 A |  | 100% | 2011-10-17 | 2011-10-19 | 2.8d |  |  |  |  | 22.4h | 22.4h |
| 37 | 1.7.1 | Design |  | 0.2d | 2011-10-17 A | 2011-10-17 A |  | 100% | 2011-10-17 | 2011-10-17 | 0.2d |  |  |  | ANO | 1.6h | 1.6h |
| 38 | 1.7.2 | Apply IBM upgrade/patch on incumbent probe |  | 0.4d | 2011-10-17 A | 2011-10-17 A | 37 | 100% | 2011-10-17 | 2011-10-17 | 0.4d |  |  |  | ANO | 3.2h | 3.2h |
| 39 | 1.7.3 | Check that events are still being processed as per pre-upgrade |  | 0.4d | 2011-10-17 A | 2011-10-17 A | 38 | 100% | 2011-10-17 | 2011-10-17 | 0.4d |  |  |  | ANO | 3.2h | 3.2h |
| 40 | 1.7.4 | Investigate any policies which appear to fail |  | 0.4d | 2011-10-18 A | 2011-10-18 A | 39 | 100% | 2011-10-18 | 2011-10-18 | 0.4d |  |  |  | ANO | 3.2h | 3.2h |
| 41 | 1.7.5 | Document & Handover to support |  | 1d | 2011-10-18 A | 2011-10-19 A | 40 | 100% | 2011-10-18 | 2011-10-19 | 1d |  |  |  | ANO | 8h | 8h |
| 42 | 1.7.6 | Deploy |  | 0.4d | 2011-10-19 A | 2011-10-19 A | 41 | 100% | 2011-10-19 | 2011-10-19 | 0.4d |  |  |  | ANO | 3.2h | 3.2h |
| 43 | 1.8 | **WP5 – Huawei Probe - M2000 Huawei probe onto BSS environment** |  | 27.25d | 2011-11-14 | 2011-12-21 |  |  | 2011-11-01 | 2011-11-30 | 22d | 28.75d |  |  |  | 176h |  |
| 44 | 1.8.1 | Design |  | 1d | 2011-11-14 | 2011-11-14 |  |  | 2011-11-01 | 2011-11-01 | 1d | 28.75d | 0d | start no earlier than 2011-11-14 | Alex Silva | 8h |  |
| 45 | 1.8.2 | Install Huawei probe onto BSS environment |  | 10d | 2011-11-15 | 2011-11-28 | 44 |  | 2011-11-02 | 2011-11-11 | 8d | 28.75d | 0d |  | Alex Silva [80%] | 64h |  |
| 46 | 1.8.3 | Create probe rules |  | 6.25d | 2011-11-29 | 2011-12-07 | 45 |  | 2011-11-14 | 2011-11-18 | 5d | 28.75d | 0d |  | Alex Silva [80%] | 40h |  |
| 47 | 1.8.4 | Run probe to receive/collect events |  | 2.5d | 2011-12-07 | 2011-12-09 | 46 |  | 2011-11-21 | 2011-11-22 | 2d | 28.75d | 0d |  | Alex Silva [80%] | 16h |  |
| 48 | 1.8.5 | Test that events produce same results as in other enviornments system. |  | 3.75d | 2011-12-09 | 2011-12-15 | 47 |  | 2011-11-23 | 2011-11-25 | 3d | 28.75d | 0d |  | Alex Silva [80%] | 24h |  |
| 49 | 1.8.6 | Document & Handover to support |  | 1.25d | 2011-12-15 | 2011-12-16 | 48 |  | 2011-11-28 | 2011-11-28 | 1d | 28.75d | 0d |  | Alex Silva [80%] | 8h |  |
| 50 | 1.8.7 | Any additional steps for Deployment? |  | 2.5d | 2011-12-16 | 2011-12-21 | 49 |  | 2011-11-29 | 2011-11-30 | 2d | 28.75d | 0d |  | Alex Silva [80%] | 16h |  |
| 51 | 1.9 | Payment Milestone 1 - WP3 Alcatel & WP5 Huawei | milestone | 0d | 2011-12-21 | 2011-12-21 | 50 |  | 2011-11-30 | 2011-11-30 | 0d | 29.75d |  |  |  |  |  |

| ID | WBS | Task | Type | Duration | Start | Finish | Predecessors | Complete | Remaining | Baseline start | Baseline finish | Baseline duration | Total slack | Free slack | Constraint | Deadline | Resources | Work | Actual work |
| --- | --- | --- | --- | --- | --- | --- | --- | --- | --- | --- | --- | --- | --- | --- | --- | --- | --- | --- | --- |
| 52 | 1.10 | **WP6 – Impact Policies** |  | 36d | 2011-11-14 | 2012-01-02 |  |  |  | 2011-11-14 | 2012-01-02 | 36d | 20d |  |  |  |  | 448h |  |
| 53 | 1.10.1 | Create Policy workflow/design (with Mobilink SME(s)) Mobilink to provide Policy requirement via single workshop |  | 3d | 2011-11-14 | 2011-11-16 |  |  |  | 2011-11-14 | 2011-11-16 | 3d | 20d | 0d | start no earlier than 2011-11-14 |  | Julian Luxton | 24h |  |
| 54 | 1.10.2 | Configure Impact policies |  | 25d | 2011-11-17 | 2011-12-21 | 53 |  |  | 2011-11-17 | 2011-12-21 | 25d | 20d | 0d |  |  | Sagar; Rishikesh Bhide | 320h |  |
| 55 | 1.10.3 | Relevant TSRM incident created if required |  | 3d | 2011-12-22 | 2011-12-26 | 54 |  |  | 2011-12-22 | 2011-12-26 | 3d | 20d | 0d |  |  | Rishikesh Bhide; Sagar | 40h |  |
| 56 | 1.10.4 | Test to Mobilink Scenario – respond to any accepted defects |  | 3d | 2011-12-27 | 2011-12-29 | 55 |  |  | 2011-12-27 | 2011-12-29 | 3d | 20d | 0d |  |  | Rishikesh Bhide; Sagar | 40h |  |
| 57 | 1.10.5 | Document and handover to support |  | 1d | 2011-12-30 | 2011-12-30 | 56 |  |  | 2011-12-30 | 2011-12-30 | 1d | 20d | 0d |  |  | Rishikesh Bhide; Sagar | 8h |  |
| 58 | 1.10.6 | Deploy |  | 1d | 2012-01-02 | 2012-01-02 | 57 |  |  | 2012-01-02 | 2012-01-02 | 1d | 20d | 0d |  |  | Rishikesh Bhide; Sagar | 16h |  |
| 59 | 1.11 | **WP8 – Staging Environment Establishment** |  | 15d | 2011-11-10 | 2011-11-30 |  |  |  | 2011-11-07 | 2011-11-25 | 15d | 0d |  |  | 2011-10-28 |  | 120h |  |
| 60 | 1.11.1 | Installation of Tivoli Subset to emulate Prodn Environment | manual | 15d | 2011-11-10 | 2011-11-30 |  |  |  | 2011-11-07 | 2011-11-25 | 15d |  |  |  |  | Julian Luxton | 120h |  |
| 61 | 1.12 | Payment Milestone 4 - WP6 Ipmact Policies & WP8 Staging Env Bld | milestone | 0d | 2012-01-02 | 2012-01-02 | 58, 60 |  |  | 2012-01-02 | 2012-01-02 | 0d | 20d | 4d |  |  |  |  |  |
| 62 | 1.13 | **WP9 - ZTE Probe Integration** |  | 44.5d? | 2011-10-17 A | 2011-12-16 |  | 14% | 38.36d? | 2011-10-17 | 2011-12-16 | 44.5d? | 32.5d |  |  |  |  | 297.6h | 43.2h |
| 63 | 1.13.1 | Design & LLD for BSS Changes | manual | 2d? | 2011-10-17 A | 2011-10-18 |  | 80% | 0.4d? | 2011-10-17 | 2011-10-18 | 2d? |  |  |  |  | Alex Silva [80%] | 16h | 12.8h |
| 64 | 1.13.2 | Probe Installation |  | 1.25d? | 2011-10-19 A | 2011-10-20 A | 63 | 100% |  | 2011-10-19 | 2011-10-20 | 1.25d? |  |  |  |  | Alex Silva [80%] | 8h | 8h |
| 65 | 1.13.3 | Probe Rules Creation |  | 2.5d? | 2011-10-20 A | 2011-10-24 | 64 | 90% | 0.25d? | 2011-10-20 | 2011-10-24 | 2.5d? | 71.25d |  |  |  | Alex Silva [80%] | 16h | 14.4h |
| 66 | 1.13.4 | Probe Enablement |  | 1.25d? | 2011-10-24 A | 2011-10-25 A | 65 | 100% |  | 2011-10-24 | 2011-10-25 | 1.25d? |  |  |  |  | Alex Silva [80%] | 8h | 8h |
| 67 | 1.13.5 | **Impact - Policies Update** |  | 37.5d? | 2011-10-26 | 2011-12-16 |  |  |  | 2011-10-26 | 2011-12-16 | 37.5d? | 1d |  |  |  |  | 249.6h |  |
| 68 | 1.13.5.1 | RSL Link Disconnect |  | 2.5d? | 2011-10-26 | 2011-10-28 | 66 |  |  | 2011-10-26 | 2011-10-28 | 2.5d? | 30d | 0d |  |  | Alex Silva [80%] | 16h |  |
| 69 | 1.13.5.2 | BSS Environmental | manual | 2d? | 2011-10-27 | 2011-10-28 | 68 |  |  | 2011-10-27 | 2011-10-28 | 2d? |  |  |  |  | Alex Silva [80%] | 12.8h |  |
| 70 | 1.13.5.3 | Site Down | manual | 2d? | 2011-10-31 | 2011-11-01 | 69 |  |  | 2011-10-31 | 2011-11-01 | 2d? |  |  |  |  | Alex Silva [80%] | 12.8h |  |
| 71 | 1.13.5.4 | Cell Down | manual | 2d? | 2011-11-02 | 2011-11-03 | 70 |  |  | 2011-11-02 | 2011-11-03 | 2d? |  |  |  |  | Alex Silva [80%] | 12.8h |  |
| 72 | 1.13.5.5 | Enrichment | manual | 2d? | 2011-11-04 | 2011-11-07 | 71 |  |  | 2011-11-04 | 2011-11-07 | 2d? |  |  |  |  | Alex Silva [80%] | 12.8h |  |
| 73 | 1.13.5.6 | Cell GPRS Failure | manual | 2d? | 2011-11-08 | 2011-11-09 | 72 |  |  | 2011-11-08 | 2011-11-09 | 2d? |  |  |  |  | Alex Silva [80%] | 12.8h |  |
| 74 | 1.13.5.7 | Cell Performance | manual | 2d? | 2011-11-10 | 2011-11-11 | 73 |  |  | 2011-11-10 | 2011-11-11 | 2d? |  |  |  |  | Alex Silva [80%] | 12.8h |  |
| 75 | 1.13.5.8 | X25 Failure | manual | 2d? | 2011-11-14 | 2011-11-15 | 74 |  |  | 2011-11-14 | 2011-11-15 | 2d? |  |  |  |  | Alex Silva [80%] | 12.8h |  |
| 76 | 1.13.5.9 | Test Case Preparation |  | 3.75d | 2011-11-16 | 2011-11-21 | 75 |  |  | 2011-11-16 | 2011-11-21 | 3.75d | 31.5d | 0d |  |  | Alex Silva [80%] | 24h |  |
| 77 | 1.13.5.10 | Testing & UAT |  | 18.75d | 2011-11-21 | 2011-12-16 | 76 |  |  | 2011-11-21 | 2011-12-16 | 18.75d | 31.5d | 0d |  |  | Alex Silva [80%] | 120h |  |
| 78 | 1.14 | Milestone MS5 - ZTE Complete | milestone | 0d | 2011-12-16 | 2011-12-16 | 77 |  |  | 2011-12-16 | 2011-12-16 | 0d | 31.5d | 15.5d |  |  |  |  |  |

| ID | WBS | Task | Duration | Start | Finish | Predecessors | Baseline start | Baseline finish | Baseline duration | Total slack | Constraint | Resources | Work |
| --- | --- | --- | --- | --- | --- | --- | --- | --- | --- | --- | --- | --- | --- |
| 79 | 1.15 | **Project Close** | 1d | 2012-01-09 | 2012-01-09 |  | 2012-01-09 | 2012-01-09 | 1d | 16d |  |  | 8h |
| 80 | 1.15.1 | Closure & Acceptance Sign off | 1d | 2012-01-09 | 2012-01-09 | 20, 35, 50, 61, 78 | 2012-01-09 | 2012-01-09 | 1d | 16d | start no earlier than 2012-01-09 | Badar Khan | 8h |
