# Mobilink OSS Project Plan - Phases 1,2&3

Schedule from MS Project, 2011-02-14 to 2011-09-23, status date 2011-05-15, A marks actual dates.
Innovise

## Calendars

- Standard: Mon-Fri 08:00-12:00, 13:00-17:00; Sat-Sun off. Exceptions (off unless hours are given): 2011-04-22 to 2011-04-25, 2011-04-29, 2011-05-02, 2011-05-30, 2011-08-29.

## Resources

| Resource | Group |
| --- | --- |
| Mansoor Alam | Innovise |
| Alex Silva | Innovise |
| Nitesh Patel | Innovise |
| Mobilink | Mobilink |
| Ken Edmunds | Innovise |
| David Pridmore | Innovise |
| David Gilmore | Innovise |
| Chris Janes | Innovise |
| Badar Khan | Innovise |
| Mihia Strava | Innovise |
| Julian Luxton | Innovise |

## Schedule

| ID | WBS | Task | Type | Duration | Start | Finish | Predecessors | Total slack | Free slack | Constraint |
| --- | --- | --- | --- | --- | --- | --- | --- | --- | --- | --- |
| 1 | 1 | **Mobilink OSS Project - Phase 2 Milestones and Deliverable summary** |  | 153.6d | 2011-02-14 | 2011-09-23 |  | 0d |  |  |
| 2 | 1.1 | **Milestones** |  | 78.6d | 2011-04-18 | 2011-08-11 |  | 30d |  |  |
| 3 | 1.1.1 | ATP - Project Kickoff |  | 1d | 2011-04-18 | 2011-04-18 |  | 107.6d |  |  |
| 4 | 1.1.2 | **Impact Milestones** |  | 33.3d | 2011-06-08 | 2011-07-25 |  | 7.6d |  |  |
| 5 | 1.1.2.1 | Impact - VAS domain complete - ready for test | milestone | 0d | 2011-07-13 | 2011-07-13 | 40 | 15.6d | 8d |  |
| 6 | 1.1.2.2 | Impact - IP domain complete - ready for test | milestone | 0d | 2011-07-25 | 2011-07-25 | 48 | 7.6d | 0d |  |
| 7 | 1.1.2.3 | Impact Core Complete - ready for test | milestone | 0d | 2011-06-08 | 2011-06-08 | 54 | 40.9d | 33.3d |  |
| 8 | 1.1.2.4 | Impact - Wimax complete - ready for test | milestone | 0d | 2011-07-04 | 2011-07-04 | 61 | 22.6d | 15d |  |
| 9 | 1.1.2.5 | Impact - Testing Complete | milestone | 0d | 2011-07-25 | 2011-07-25 | 47, 53, 60, 70 | 7.6d |  |  |
| 10 | 1.1.3 | **TSRM Milestones** |  | 68.6d | 2011-04-26 | 2011-08-04 |  | 30d | 0d |  |
| 11 | 1.1.3.1 | Change Design Agreed | milestone | 0d | 2011-04-26 | 2011-04-26 | 78 | 98.6d | 0d |  |
| 12 | 1.1.3.2 | Configuration Mgt Complete | milestone | 0d | 2011-07-08 | 2011-07-08 | 86 | 48.6d |  |  |
| 13 | 1.1.3.3 | Preventative Maintenance dev complete | milestone | 0d | 2011-07-21 | 2011-07-21 | 89 | 40d |  |  |
| 14 | 1.1.3.4 | TSRM Testing complete (and signed off) | milestone | 0d | 2011-08-04 | 2011-08-04 | 92 | 0d |  |  |
| 15 | 1.1.4 | MIBs and Probes installed and configured | milestone | 0d | 2011-06-17 | 2011-06-17 | 93 | 63.6d | 33.6d |  |
| 16 | 1.1.5 | Integrations (Schedule to be Agreed - Indicative only) | milestone | 0d | 2011-06-20 | 2011-06-20 | 99 | 62.6d | 32.6d |  |
| 17 | 1.1.6 | Project Close (allow 5 working days after last milestone) | milestone | 0d | 2011-08-11 | 2011-08-11 | 4FS+5d, 10FS+5d, 15FS+5d, 16FS+5d | 30d |  |  |
| 19 | 1.2 | **Deliverables** |  | 123.6d | 2011-02-14 | 2011-08-11 |  | 30d |  |  |
| 20 | 1.2.1 | A1 Statement of Work | milestone | 0d | 2011-04-18 | 2011-04-18 |  | 108.6d |  |  |
| 21 | 1.2.2 | A2 Requirements workshop (held in February 2011) | milestone | 0d | 2011-02-14 | 2011-02-14 |  | 153.6d |  | start no earlier than 2011-02-14 |
| 22 | 1.2.3 | A3 Functional Design Specification | milestone | 0d | 2011-06-29 | 2011-06-29 | 41, 49, 55, 62, 78 | 45.6d | 0d |  |
| 23 | 1.2.4 | B1 Packaged code released to Test | milestone | 0d | 2011-07-25 | 2011-07-25 | 5, 6, 7, 8 | 42.6d |  |  |
| 24 | 1.2.5 | B2 Test Scenarios and Scripts (Mobilink deliverable) | milestone | 0d | 2011-07-20 | 2011-07-20 | 22FS+15d | 45.6d |  |  |
| 25 | 1.2.6 | C1 Test Reports | milestone | 0d | 2011-08-04 | 2011-08-04 | 14, 9 | 30d | 0d |  |
| 26 | 1.2.7 | C2 Test Exit Report | milestone | 0d | 2011-08-11 | 2011-08-11 | 25FS+5d | 30d |  |  |

| ID | WBS | Task | Type | Duration | Start | Finish | Predecessors | Complete | Remaining | Total slack | Free slack | Constraint | Resources | Work | Actual work |
| --- | --- | --- | --- | --- | --- | --- | --- | --- | --- | --- | --- | --- | --- | --- | --- |
| 28 | 1.3 | **Payment Deliverables** |  | 98.6d | 2011-05-05 | 2011-09-23 |  |  |  | 0d |  |  |  |  |  |
| 29 | 1.3.1 | CP1 - Sign off of Functional Design (allow 5 days after completion) | milestone | 0d | 2011-05-05 | 2011-05-05 | 11FS+5d |  |  | 98.6d |  |  |  |  |  |
| 30 | 1.3.2 | CP2 - Provisional Acceptance (for all workpackets?) = exit test | milestone | 0d | 2011-08-04 | 2011-08-04 | 4, 14 |  |  | 0d |  |  |  |  |  |
| 31 | 1.3.3 | CP3 - Production System Acceptance (not sure what links to - allow 1 weeks after acceptance) | milestone | 0d | 2011-08-11 | 2011-08-11 | 30FS+5d |  |  | 0d |  |  |  |  |  |
| 32 | 1.3.4 | CP4 - End of ELS (do not have schedule- worse case = 30 days after CP3) | milestone | 0d | 2011-09-23 | 2011-09-23 | 31FS+30d |  |  | 0d |  |  |  |  |  |
| 34 | 2 | **Mobilink Phase 2 - Delivery Schedule** |  | 101d | 2011-04-18 A | 2011-09-13 |  | 12% | 89.34d | 7.6d |  |  |  | 3404h | 412.4h |
| 35 | 2.1 | **WP0 - Initiation/Start-up/Close Down** |  | 101d | 2011-04-18 A | 2011-09-13 |  | 15% | 86.04d | 7.6d |  |  |  | 640h | 96h |
| 36 | 2.1.1 | Project Management and SA Overhead |  | 75d | 2011-04-27 A | 2011-08-12 |  | 10% | 67.5d | 28.6d |  | finish no earlier than 2011-08-12 | Badar Khan [60%]; Julian Luxton [40%] | 600h | 60h |
| 37 | 2.1.2 | Phase 2 Scope SOW |  | 5d | 2011-04-18 A | 2011-04-26 |  | 90% | 0.5d | 103.6d |  |  | Badar Khan | 40h | 36h |
| 38 | 2.1.3 | Project Closedown |  | 1d | 2011-09-13 | 2011-09-13 |  |  |  | 7.6d |  | start no earlier than 2011-09-13 |  |  |  |
| 39 | 2.2 | **WP1 - Impact Development** |  | 60d | 2011-04-28 A | 2011-07-25 |  | 9% | 54.36d | 7.6d |  |  |  | 1492h | 145.2h |
| 40 | 2.2.1 | **WP1A - VAS - Value Added Services Domain** |  | 43d | 2011-05-13 A | 2011-07-13 |  | 1% | 42.6d | 15.6d | 0d |  |  | 244h | 4.8h |
| 41 | 2.2.1.1 | WP1A.0 Vas Policy Design |  | 8d | 2011-05-13 A | 2011-05-24 |  | 5% | 7.6d | 34.6d | 0d | start no earlier than 2011-05-13 | Nitesh Patel [50%]; Mobilink | 64h | 4.8h |
| 42 | 2.2.1.2 | WP1A.1 SGSN Multiple C7 Link Down |  | 8d | 2011-05-25 | 2011-06-06 | 41 |  |  | 34.6d | 0d |  | Nitesh Patel [50%] | 32h |  |
| 43 | 2.2.1.3 | WP1A.2 Cross Domain GPRS Policy |  | 8d | 2011-06-07 | 2011-06-16 | 42 |  |  | 34.6d |  |  | Nitesh Patel [50%] | 32h |  |
| 44 | 2.2.1.4 | WP1A.3 VAS Hardware Alarm |  | 3d | 2011-06-17 | 2011-06-21 | 43 |  |  | 15.6d | 0d |  | Nitesh Patel [50%] | 12h |  |
| 45 | 2.2.1.5 | WP1A.4 VAS Service Impacting Alarms |  | 8d | 2011-06-22 | 2011-07-01 | 44 |  |  | 15.6d | 0d |  | Nitesh Patel [50%] | 32h |  |
| 46 | 2.2.1.6 | WP1A.5 Day/Night Generic Trigger Granularity |  | 3d | 2011-07-04 | 2011-07-06 | 45 |  |  | 15.6d | 0d |  | Nitesh Patel [50%] | 12h |  |
| 47 | 2.2.1.7 | WP1A.6 VAS Testing & UAT |  | 5d | 2011-07-07 | 2011-07-13 | 46, 97, 73 |  |  | 15.6d | 8d |  | Nitesh Patel [50%]; Mobilink | 60h |  |
| 48 | 2.2.2 | **WP1B - IP Domain** |  | 38d | 2011-06-02 | 2011-07-25 |  |  |  | 7.6d | 0d |  |  | 560h |  |
| 49 | 2.2.2.1 | WP1B.0 - IP Policy Design |  | 8d | 2011-06-20 | 2011-06-29 |  |  |  | 7.6d | 0d | start no earlier than 2011-06-20 | Mobilink; Julian Luxton | 128h |  |
| 50 | 2.2.2.2 | WP1B.1 ITNM Discovery |  | 12d | 2011-06-02 | 2011-06-17 |  |  |  | 33.6d |  | start no earlier than 2011-06-02 | Julian Luxton [25%] | 24h |  |
| 51 | 2.2.2.3 | WP1B.1 ITNM Configuration |  | 15d | 2011-06-20 | 2011-07-08 | 97 |  |  | 18.6d |  | start no earlier than 2011-06-20 | Ken Edmunds | 120h |  |
| 52 | 2.2.2.4 | WP1B.2 IP Event Correlation |  | 10d | 2011-06-30 | 2011-07-13 | 49 |  |  | 7.6d | 0d |  | Nitesh Patel; Julian Luxton | 160h |  |
| 53 | 2.2.2.5 | WP1B.3 IP Testing & UAT |  | 8d | 2011-07-14 | 2011-07-25 | 52 |  |  | 7.6d | 0d |  | Ken Edmunds; Mobilink; Alex Silva; Julian Luxton | 128h |  |

Notes:
- 41: Move to Chris Janes. Nitesh only available 50%. CJ bring in earlier. Move Nitesh to support

| ID | WBS | Task | Duration | Start | Finish | Predecessors | Complete | Remaining | Total slack | Free slack | Constraint | Resources | Work | Actual work |
| --- | --- | --- | --- | --- | --- | --- | --- | --- | --- | --- | --- | --- | --- | --- |
| 54 | 2.2.3 | **WP1C - Core Domain (STP)** | 26.7d | 2011-04-28 A | 2011-06-08 |  | 42% | 15.52d | 40.9d | 0d |  |  | 232h | 96.4h |
| 55 | 2.2.3.1 | WP1C.0 Core Policies Design | 5d | 2011-04-28 A | 2011-05-04 |  | 90% | 0.5d | 50.15d | 0d | start no earlier than 2011-04-28 | Mihia Strava; Mobilink | 56h | 52h |
| 56 | 2.2.3.2 | WP1C.1 Extension of C7 Policies for STP DPC Linkset & Link Alarms | 3d | 2011-05-05 A | 2011-05-13 | 55, 96 | 35% | 1.95d | 45.4d | 0d |  | Mihia Strava | 24h | 8.4h |
| 57 | 2.2.3.3 | WP1C.2 STP Hardware Alarm | 5d | 2011-05-13 A | 2011-05-20 | 56 | 90% | 0.5d | 40.9d | 0d |  | Mihia Strava | 40h | 36h |
| 58 | 2.2.3.4 | WP1C.3 STP Multiple Fails By City | 5d | 2011-05-20 | 2011-05-27 | 57 |  |  | 40.9d | 0d |  | Mihia Strava | 40h |  |
| 59 | 2.2.3.5 | WP1C.4 Generic Trigger | 1d | 2011-05-27 | 2011-05-31 | 58 |  |  | 40.9d | 0d |  | Mihia Strava | 8h |  |
| 60 | 2.2.3.6 | WP1C.4 Core Domain Testing & UAT | 5d | 2011-06-01 | 2011-06-08 | 56, 57, 58, 74 |  |  | 40.9d | 33.3d |  | Mihia Strava; Mobilink | 64h |  |
| 61 | 2.2.4 | **WP1D - Wimax Domain** | 35d | 2011-05-16 A | 2011-07-04 |  | 13% | 30.29d | 22.6d | 0d |  |  | 392h | 44h |
| 62 | 2.2.4.1 | WP1D.0 Wimax Policy Design | 5d | 2011-05-16 A | 2011-05-20 |  | 5% | 4.75d | 22.6d | 0d | start no earlier than 2011-05-16 | Alex Silva; Mobilink | 80h | 4h |
| 63 | 2.2.4.2 | WP1D.0.1 Alcatel Probe Deployment | 3d | 2011-05-18 A | 2011-05-20 A |  | 100% |  |  |  | start no earlier than 2011-05-18 | Alex Silva | 24h | 24h |
| 64 | 2.2.4.3 | WP1D.0.2 Alcatel Probe Rules | 5d | 2011-05-20 A | 2011-05-26 |  | 40% | 3d | 48.6d |  | start no earlier than 2011-05-20 | Alex Silva | 40h | 16h |
| 65 | 2.2.4.4 | WP1D.1 Alcatel Service Loss | 10d | 2011-05-27 | 2011-06-10 | 62, 98 |  |  | 22.6d | 0d |  | Alex Silva | 80h |  |
| 66 | 2.2.4.5 | WP1D.2 Alcatel Supervision Loss | 5d | 2011-06-13 | 2011-06-17 | 65 |  |  | 22.6d | 0d |  | Alex Silva | 40h |  |
| 67 | 2.2.4.6 | WP1D.3 Alcatel Service & Supervision Loss | 2d | 2011-06-20 | 2011-06-21 | 66 |  |  | 22.6d | 0d |  | Alex Silva | 16h |  |
| 68 | 2.2.4.7 | WP1D.4 Alcatel Communications Failure | 2d | 2011-06-22 | 2011-06-23 | 67 |  |  | 22.6d | 0d |  | Alex Silva | 16h |  |
| 69 | 2.2.4.8 | WP1D.5 Huawei Service Loss | 2d | 2011-06-24 | 2011-06-27 | 68 |  |  | 22.6d | 0d |  | Alex Silva | 16h |  |
| 70 | 2.2.4.9 | WP1D.6 Wimax Testing & UAT | 5d | 2011-06-28 | 2011-07-04 | 65, 66, 67, 68, 69, 98, 75 |  |  | 22.6d | 15d |  | Alex Silva; Mobilink | 80h |  |
| 71 | 2.2.5 | **WP1E - Data Load** | 31d | 2011-05-23 | 2011-07-05 |  |  |  | 16.6d |  |  |  | 64h |  |
| 72 | 2.2.5.1 | Receive data from Mobilink (cleansed and ready for load) | 2d | 2011-05-23 | 2011-05-24 |  |  |  | 43.6d | 2.7d | finish no earlier than 2011-05-24 | Mobilink | 16h |  |
| 73 | 2.2.5.2 | WP1E.1 Data load for Impact (VAS} | 2d | 2011-07-04 | 2011-07-05 | 72, 46SS |  |  | 16.6d | 1d |  | David Pridmore | 16h |  |
| 74 | 2.2.5.3 | WP1E.1 Data load for Impact (Core} | 2d | 2011-05-27 | 2011-06-01 | 72, 59SS |  |  | 40.9d | 0d |  | David Pridmore | 16h |  |
| 75 | 2.2.5.4 | WP1E.1 Data load for Impact (WiMax} | 2d | 2011-06-24 | 2011-06-27 | 72, 69SS |  |  | 22.6d | 0d |  | David Pridmore | 16h |  |
| 76 | 2.3 | **WP2 - TSRM** | 73.6d | 2011-04-18 A | 2011-08-04 |  | 17% | 61.19d | 0d |  |  |  | 680h | 127.2h |
| 77 | 2.3.1 | **WP2A Change Management** | 35d | 2011-04-18 A | 2011-06-10 |  | 32% | 23.75d | 0d |  |  |  | 320h | 116h |
| 78 | 2.3.1.1 | WP2A.1 Design Document | 5d | 2011-04-18 A | 2011-04-26 |  | 65% | 1.75d | 8d | 0d |  | David Pridmore; Mobilink | 80h | 52h |
| 79 | 2.3.1.2 | WP2A.2 Simple Changes - Views, Processes and Customisations | 5d | 2011-04-27 A | 2011-05-05 | 78 | 40% | 3d | 6d | 0d |  | David Pridmore | 40h | 16h |
| 80 | 2.3.1.3 | WP2A.3 ECRF Changes - Views, Processes and Customisations | 12d | 2011-05-06 A | 2011-05-23 | 79 | 50% | 6d | 0d |  |  | David Pridmore | 96h | 48h |
| 81 | 2.3.1.4 | WP2A.4 Email Escalations – Simple Changes | 3d | 2011-05-24 | 2011-05-26 | 80 |  |  | 0d |  |  | David Pridmore | 24h |  |
| 82 | 2.3.1.5 | WP2A.5 Email Escalations – ECFR Changes | 3d | 2011-05-27 | 2011-06-01 | 81 |  |  | 0d |  |  | David Pridmore | 24h |  |
| 83 | 2.3.1.6 | WP2A.6 Email Listener | 3d | 2011-06-02 | 2011-06-06 | 82 |  |  | 0d |  |  | David Pridmore | 24h |  |
| 84 | 2.3.1.7 | WP2A.7 Reporting | 2d | 2011-06-07 | 2011-06-08 | 83 |  |  | 0d |  |  | David Pridmore | 16h |  |
| 85 | 2.3.1.8 | WP2A.8 Unit testing | 2d | 2011-06-09 | 2011-06-10 | 84 |  |  | 0d |  |  | David Pridmore | 16h |  |

| ID | WBS | Task | Duration | Start | Finish | Predecessors | Complete | Remaining | Total slack | Free slack | Constraint | Resources | Work | Actual work |
| --- | --- | --- | --- | --- | --- | --- | --- | --- | --- | --- | --- | --- | --- | --- |
| 86 | 2.3.2 | **WP2B - Configuration Management – IP Devices** | 20d | 2011-06-13 | 2011-07-08 |  |  |  | 0d |  |  |  | 160h |  |
| 87 | 2.3.2.1 | WP2B.1 Data Collection (to include design) | 16d | 2011-06-13 | 2011-07-04 | 77 |  |  | 0d |  |  | David Pridmore | 128h |  |
| 88 | 2.3.2.2 | WP2B.4 Data Flow | 4d | 2011-07-05 | 2011-07-08 | 87 |  |  | 0d |  |  | David Pridmore | 32h |  |
| 89 | 2.3.3 | **WP2C - Preventative Maintenance** | 28.6d | 2011-06-13 A | 2011-07-21 |  | 14% | 24.6d | 0d |  |  |  | 80h | 11.2h |
| 90 | 2.3.3.1 | WPC2.1 Development to enable Preventative Maintenance | 10d | 2011-06-13 A | 2011-07-21 | 86 | 14% | 8.6d | 0d |  |  | David Pridmore | 80h | 11.2h |
| 91 | 2.3.4 | **TSRM UAT** | 10d | 2011-07-21 | 2011-08-04 |  |  |  | 0d |  |  |  | 120h |  |
| 92 | 2.3.4.1 | TSRM End to End testing of Change and Config Mgt | 10d | 2011-07-21 | 2011-08-04 | 86, 77, 89 |  |  | 0d |  |  | David Pridmore; Mobilink | 120h |  |
| 93 | 2.4 | **WP3 - MIBs and Probes** | 31d | 2011-05-05 A | 2011-06-17 |  | 14% | 26.63d | 18.6d | 0d |  |  | 312h | 44h |
| 94 | 2.4.1 | **WP3A Probe Rules Files** | 31d | 2011-05-05 A | 2011-06-17 |  | 14% | 26.63d | 18.6d |  |  |  | 312h | 44h |
| 95 | 2.4.1.1 | Set-up env and access MIBS | 3d | 2011-05-05 A | 2011-05-09 |  | 50% | 1.5d | 18.6d | 0d | start no earlier than 2011-05-05 | Ken Edmunds | 24h | 12h |
| 96 | 2.4.1.2 | Core Domain (STP) Integrate proprietary events sources/MIBs into SNMP probe rules file in addition to Netcool knowledge library (NCKL) for IP network equipment | 4d | 2011-05-05 A | 2011-05-10 A | 55 | 100% |  |  |  |  | Mihia Strava | 32h | 32h |
| 97 | 2.4.1.3 | VAS Integrate proprietary events sources/MIBs into SNMP probe rules file in addition to Netcool knowledge library (NCKL) for IP network equipment | 28d | 2011-05-10 | 2011-06-17 | 95 |  |  | 18.6d | 0d | start no earlier than 2011-05-05 | Ken Edmunds | 224h |  |
| 98 | 2.4.1.4 | WIMAX Integrate proprietary events sources/MIBs into SNMP probe rules file and Huawei M2000 probe for IP network equipment | 4d | 2011-05-23 | 2011-05-26 | 62 |  |  | 22.6d | 0d |  | Alex Silva | 32h |  |
| 99 | 2.5 | **WP4 - Integrations** | 15d | 2011-05-31 | 2011-06-20 |  |  |  | 62.6d | 0d |  |  | 120h |  |
| 100 | 2.5.1 | 4.1 Integration of the Astelia system with the TNPMW solution (further clarification required on this) | 15d | 2011-05-31 | 2011-06-20 |  |  |  | 62.6d |  | start no earlier than 2011-05-31 | David Gilmore | 120h |  |
| 101 | 2.6 | **WP5 - ELS** | 20d | 2011-08-04 | 2011-09-02 |  |  |  | 15d |  |  |  | 160h |  |
| 102 | 2.6.1 | A combination of Onsite/Offsite Support | 20d | 2011-08-04 | 2011-09-02 | 76 |  |  | 15d |  |  | David Pridmore [50%]; Alex Silva [50%] | 160h |  |
| 103 | 3 | **Potential Change Controls** | 84d | 2011-04-18 | 2011-08-18 |  |  |  | 24.6d |  |  |  |  |  |
| 104 | 3.1 | Install of the Alcatel CORBA | 4d | 2011-08-15 | 2011-08-18 |  |  |  | 24.6d |  | start no earlier than 2011-08-15 |  |  |  |
| 105 | 3.2 | Integration of TNPMW to OSS NetCool | 40d | 2011-04-18 | 2011-06-17 |  |  |  | 68.6d |  | start no earlier than 2011-04-18 |  |  |  |
| 106 | 3.3 | Mobilink now require ITM monitoring to be integrated into TSRM and for email and SMS notification functionality to be made available. | 1d | 2011-04-18 | 2011-04-18 |  |  |  | 107.6d |  |  |  |  |  |
| 107 | 4 | **Phase 1 Outstanding Items** | 1d | 2011-04-18 | 2011-04-18 |  |  |  | 107.6d |  |  |  |  |  |
| 108 | 4.1 | 12 Netcool Reporter Reports Max (Effort to develop these time-boxed to 10 man days max) | 1d | 2011-04-18 | 2011-04-18 |  |  |  | 107.6d |  |  |  |  |  |
| 109 | 4.2 | Incorporation of Re-Synch Feature | 1d | 2011-04-18 | 2011-04-18 |  |  |  | 107.6d |  |  |  |  |  |
| 110 | 4.3 | Advisory support Mobilink in the rollout and configuration of ITM monitoring to the wider Mobilink server estate | 1d | 2011-04-18 | 2011-04-18 |  |  |  | 107.6d |  |  |  |  |  |

Notes:
- 87: 1. Ensure TADDM is working and apply latest fixpack 1 day/ 2.Configure Collection of data from ITNM into TADDM using DLA 2 days/ 3.Configure Collection of data from ITM into TADDM using DLA 2 days/ 4.Configure Update of Maximo Actual Cis from TADDM using integration composer 2 days/ 5.Configure Import of VAS information from spreadsheet into data collection database using Perl scripts 1 day/ 6.Configure import of VAS information from data collection database into Maximo using TDI assembly line 1 day/ 7.Configure Import of Wimax information from wimax device configuration files into data collection database using Perl scripts 4 days/ 8.Configure import of Wimax information from data collection database into Maximo using TDI assembly line 1 day/ 9.Automated scheduling of the above 1 day
- 88: 20% for testing/rework and a day for support documentation and handover / 3 days [20% of above 15 and 1 day
- 98: Moved from KE to Alex

| ID | WBS | Task | Duration | Start | Finish | Total slack |
| --- | --- | --- | --- | --- | --- | --- |
| 111 | 5 | **Support** | 1d | 2011-04-18 | 2011-04-18 | 107.6d |
| 112 | 5.1 | TBSM – The current Service in considered unstable and is crashing | 1d | 2011-04-18 | 2011-04-18 | 107.6d |
